# release-plan

How a schedule from MS Project changed from version to version. A marks actual dates.

## Version 1 (saved 2007-03-02)

Note of the change: moving

| ID | WBS | Task | Duration | Start | Finish | Predecessors | Total float | Constraint |
| --- | --- | --- | --- | --- | --- | --- | --- | --- |
| 1 | 1 | **Public Events** | 44d | 2007-03-02 | 2007-05-15 |  | 0d |  |
| 2 |  | ApacheCon slides+demo | 3d | 2007-03-02 | 2007-03-07 |  | 32.83d |  |
| 3 |  | ApacheCon | 3d | 2007-05-02 | 2007-05-07 | 2 | 0d | must start on 2007-05-02 |
| 4 |  | GGF20 | 4d | 2007-05-09 | 2007-05-15 |  | 0d | must start on 2007-05-09 |
| 6 |  | Investigation | 1.33d? | 2007-03-02 | 2007-03-05 |  | 42.67d |  |
| 8 |  | Core | 0d | 2007-03-02 | 2007-03-02 |  | 44d |  |
| 10 | 4 | **Components** | 4d? | 2007-03-02 | 2007-03-08 |  | 40d |  |
| 11 | 4.1 | **XML** | 0d | 2007-03-02 | 2007-03-02 |  | 44d |  |
| 12 |  | XML Complete | 0d | 2007-03-02 | 2007-03-02 |  | 44d |  |
| 13 |  | JMX | 1d? | 2007-03-02 | 2007-03-05 |  | 43d |  |
| 14 | 4.3 | **Database Component** | 1d? | 2007-03-02 | 2007-03-05 |  | 43d |  |
| 15 |  | SFOS-77 Document Database | 1d? | 2007-03-02 | 2007-03-05 |  | 43d | start no earlier than 2007-03-02 |
| 19 | 4.4 | **JUnit component** | 4d? | 2007-03-02 | 2007-03-08 |  | 40d |  |
| 20 |  | JUnit tracing component | 1d | 2007-03-02 | 2007-03-05 |  | 42d |  |
| 21 |  | JUnit report save/postprocess | 3d? | 2007-03-02 | 2007-03-07 |  | 40d |  |
| 22 |  | JUnit documentation | 1d? | 2007-03-07 | 2007-03-08 | 20, 21 | 40d |  |
| 24 |  | Extras | 1.33d? | 2007-03-02 | 2007-03-05 |  | 42.67d |  |
| 26 | 6 | **Functionality Milestones** | 0d | 2007-03-02 | 2007-03-02 |  | 44d |  |
| 27 |  | Investigation Complete | 0d | 2007-03-02 | 2007-03-02 |  | 44d |  |
| 29 | 7 | **Articles and Press** | 2d | 2007-03-02 | 2007-03-06 |  | 42d |  |
| 30 |  | Release press note | 3h | 2007-03-02 | 2007-03-02 |  | 42.17d |  |
| 31 |  | TSS Article | 2d | 2007-03-02 | 2007-03-06 |  | 42d |  |
| 32 |  | HP Developer Articles | 2d | 2007-03-02 | 2007-03-06 |  | 42d |  |
| 34 |  | Releases | 1.33d? | 2007-03-02 | 2007-03-06 | 30 | 42.17d |  |
| 35 |  | 3.11.alpha | 0d | 2007-03-02 | 2007-03-02 |  | 44d | start no earlier than 2007-03-02 |
| 36 |  | 3.11.beta | 0d | 2007-03-02 | 2007-03-02 |  | 44d | start no earlier than 2007-03-02 |
| 37 |  | 3.11.gold | 0d | 2007-03-02 | 2007-03-02 |  | 44d | start no earlier than 2007-03-02 |
| 39 |  | External Dependencies | 1.33d? | 2007-03-02 | 2007-03-05 |  | 42.67d |  |
| 41 |  | web site | 1d? | 2007-03-02 | 2007-03-05 |  | 43d |  |

## Version 2 (data date 2007-03-13, saved 2007-03-07)

Note of the change: SFOS-83 let Parallel behaviour on abnormal child termination be controllable

Last finish 2007-05-15 → 2007-05-14 (-1d). Complete tasks 0 → 1.

Added:

| ID | Task | Duration | Start | Finish | Predecessors | Constraint | Resources |
| --- | --- | --- | --- | --- | --- | --- | --- |
| 3 | Initial Release Plan | 2h | 2007-03-02 | 2007-03-02 |  | start no earlier than 2007-03-02 | Steve |
| 5 | **Workflow** | 2.33d | 2007-03-02 A | 2007-03-06 |  |  |  |
| 6 | While component | 1d | 2007-03-02 | 2007-03-02 |  | start no earlier than 2007-03-02 | Steve |
| 7 | SFOS-79 More workflow tests | 2d | 2007-03-02 | 2007-03-05 |  | start no earlier than 2007-03-02 |  |
| 8 | Workflow documentation | 1d | 2007-03-02 | 2007-03-02 |  | start no earlier than 2007-03-02 |  |
| 9 | SFOS-83 attributes to control termination behaviour of Parallel | 8h | 2007-03-05 A | 2007-03-06 A |  | start no earlier than 2007-03-05 |  |
| 12 | XML documentation | 2d | 2007-03-02 | 2007-03-05 |  | start no earlier than 2007-03-02 |  |
| 15 | Documentation | 1d? | 2007-03-02 | 2007-03-02 |  | start no earlier than 2007-03-02 | Julio |
| 17 | SFOS-80: CounterTransaction component | 1d? | 2007-03-02 | 2007-03-02 |  | start no earlier than 2007-03-02 | Steve |
| 18 | SFOS-81 SQL Select component | 1d? | 2007-03-05 | 2007-03-05 | 17 | start no earlier than 2007-03-02 | Steve |
| 20 | SFOS-82 Add tests for TerminationTransaction | 1d? | 2007-03-02 | 2007-03-02 |  | start no earlier than 2007-03-02 | Steve |
| 21 | Database Complete | 0d | 2007-03-06 | 2007-03-06 | 17, 18, 19, 20 | start no earlier than 2007-03-02 | Steve |
| 26 | **NetBeans Plugin** | 3d? | 2007-03-02 | 2007-03-06 |  |  |  |
| 27 | Obtain Source | 1d? | 2007-03-02 | 2007-03-02 |  | start no earlier than 2007-03-02 |  |
| 28 | Add to build process | 1d? | 2007-03-05 | 2007-03-05 | 27 | start no earlier than 2007-03-02 |  |
| 29 | Build and package | 1d? | 2007-03-06 | 2007-03-06 | 28 | start no earlier than 2007-03-02 |  |
| 30 | Documentation | 1d? | 2007-03-05 | 2007-03-05 | 27 | start no earlier than 2007-03-02 |  |
| 31 | Netbeans Plugin ready | 0d | 2007-03-06 | 2007-03-06 | 29, 30 | start no earlier than 2007-03-02 |  |
| 32 | **Documentation** | 10d? | 2007-03-02 | 2007-03-15 |  |  |  |
| 33 | SFOS-85 Update sfReference | 2w? | 2007-03-02 | 2007-03-15 |  | start no earlier than 2007-03-02 | Patrick |
| 34 | Review quick reference | 1d? | 2007-03-02 | 2007-03-02 |  | start no earlier than 2007-03-02 |  |
| 35 | Review tutorial | 1d? | 2007-03-02 | 2007-03-02 |  | start no earlier than 2007-03-02 |  |
| 36 | SFOS-86 Review logging docs | 1d? | 2007-03-02 | 2007-03-02 |  | start no earlier than 2007-03-02 | Julio |
| 37 | SFOS-87 Review runshell documentation | 1d? | 2007-03-07 | 2007-03-07 |  | start no earlier than 2007-03-07 |  |
| 38 | Review IDE development | 1d? | 2007-03-02 | 2007-03-02 |  | start no earlier than 2007-03-02 |  |
| 39 | Review autoloader | 1d? | 2007-03-02 | 2007-03-02 |  | start no earlier than 2007-03-02 |  |
| 40 | Review dynamic web server example | 1d? | 2007-03-02 | 2007-03-02 |  | start no earlier than 2007-03-02 |  |
| 41 | Release Manager installs Forrest | 2h | 2007-03-02 | 2007-03-02 |  | start no earlier than 2007-03-02 | Steve |
| 42 | **System Setup** | 1.5d? | 2007-03-06 | 2007-03-07 |  |  |  |
| 43 | Create Release Ubuntu VM Image | 2h | 2007-03-06 | 2007-03-06 |  | start no earlier than 2007-03-06 |  |
| 44 | Install Java 5 | 1h | 2007-03-06 | 2007-03-06 | 43 | start no earlier than 2007-03-06 |  |
| 45 | Install Ant1.7 | 1d? | 2007-03-06 | 2007-03-07 | 44 | start no earlier than 2007-03-06 |  |
| 46 | Install Forrest | 1d? | 2007-03-06 | 2007-03-07 | 44 | start no earlier than 2007-03-06 |  |
| 47 | check out | 1d? | 2007-03-06 | 2007-03-07 | 43 | start no earlier than 2007-03-06 |  |
| 48 | successful build on clean system | 0d | 2007-03-07 | 2007-03-07 | 46, 47 | start no earlier than 2007-03-06 |  |
| 50 | **Build/Release Process** | 4d? | 2007-03-02 | 2007-03-07 |  |  |  |
| 51 | Luntbuild to build core | 1d? | 2007-03-02 | 2007-03-02 |  | start no earlier than 2007-03-02 |  |
| 52 | Luntbuild to build components | 1d? | 2007-03-02 | 2007-03-02 |  | start no earlier than 2007-03-02 |  |
| 53 | Boomerang? | 1d? | 2007-03-02 | 2007-03-02 |  | start no earlier than 2007-03-02 |  |
| 54 | **Publish to the Maven Repo** | 2d? | 2007-03-06 | 2007-03-07 |  |  |  |
| 55 | Ivy task to create POM files | 2d | 2007-03-06 | 2007-03-07 |  | start no earlier than 2007-03-06 |  |
| 56 | Publish to local repostory | 1d? | 2007-03-06 | 2007-03-06 |  | start no earlier than 2007-03-06 |  |
| 57 | Publish beta to central repository | 1d? | 2007-03-06 | 2007-03-06 |  | start no earlier than 2007-03-06 |  |
| 58 | Publish Release to central repository | 1d? | 2007-03-06 | 2007-03-06 |  | start no earlier than 2007-03-06 |  |
| 59 | Defects | 1d? | 2007-03-02 | 2007-03-02 |  | start no earlier than 2007-03-02 |  |
| 61 | **External Components** | 1d? | 2007-03-05 | 2007-03-05 |  |  |  |
| 62 | CERN RPMs | 1d? | 2007-03-05 | 2007-03-05 |  | start no earlier than 2007-03-05 |  |
| 63 | CERN Xen components | 1d? | 2007-03-05 | 2007-03-05 |  | start no earlier than 2007-03-05 |  |

Removed: 19 JUnit component; 20 JUnit tracing component; 21 JUnit report save/postprocess; 22 JUnit documentation; 24 Extras; 26 Functionality Milestones; 27 Investigation Complete; 31 TSS Article; 39 External Dependencies; 41 web site

Changed:

| ID | Task | Start | Finish | Duration | Complete | Total float | Predecessors | Other |
| --- | --- | --- | --- | --- | --- | --- | --- | --- |
| 2 | **Planning** |  | 2007-03-05 → 2007-03-02 (-3d) | 1.33d? → 0.33d |  | 42.67d → 51.67d |  | was named Investigation |
| 4 | **Core** | 2007-03-02 A | 2007-03-02 → 2007-03-06 (+4d) | 0d → 2.33d | 0% → 25% | 44d → 49.67d |  |  |
| 10 | **Components** |  | 2007-03-08 → 2007-03-06 (-2d) | 4d? → 3d? |  | 40d → 49d |  |  |
| 11 | **XML** |  | 2007-03-02 → 2007-03-05 (+3d) | 0d → 2d |  | 44d → 50d |  |  |
| 14 | **JMX** |  | 2007-03-05 → 2007-03-02 (-3d) |  |  | 43d → 51d |  |  |
| 16 | **Database Component** |  | 2007-03-05 → 2007-03-06 (+1d) | 1d? → 3d? |  | 43d → 49d |  | resources none → Steve |
| 19 | SFOS-77 Document Database | 2007-03-02 → 2007-03-06 (+4d) | 2007-03-05 → 2007-03-06 (+1d) |  |  | 43d → 49d | none → 18, 17 | resources none → Steve |
| 22 | **Releases** | 2007-03-02 → 2007-03-15 (+13d) | 2007-03-06 → 2007-04-20 (+45d) | 1.33d? → 27d |  | 42.17d → 16d |  |  |
| 23 | 3.11.alpha | 2007-03-02 → 2007-03-15 (+13d) | 2007-03-02 → 2007-03-15 (+13d) |  |  | 44d → 36.5d |  | constraint start no earlier than 2007-03-02 → start no earlier than 2007-03-15 |
| 24 | 3.11.beta | 2007-03-02 → 2007-03-30 (+28d) | 2007-03-02 → 2007-03-30 (+28d) |  |  | 44d → 31d |  | constraint start no earlier than 2007-03-02 → finish no earlier than 2007-03-30 |
| 25 | 3.11.gold | 2007-03-02 → 2007-04-20 (+49d) | 2007-03-02 → 2007-04-20 (+49d) |  |  | 44d → 16d |  | constraint start no earlier than 2007-03-02 → finish no earlier than 2007-04-20 |
| 64 | **Public Events** |  | 2007-05-15 → 2007-05-14 (-1d) | 44d → 52d |  |  |  |  |
| 65 | ApacheCon slides+demo |  | 2007-03-07 → 2007-03-06 (-1d) |  |  | 32.83d → 40d |  |  |
| 66 | ApacheCon |  | 2007-05-07 → 2007-05-04 (-3d) |  |  |  |  |  |
| 67 | GGF20 |  | 2007-05-15 → 2007-05-14 (-1d) |  |  |  |  | resources none → Steve |
| 68 | **Articles and Press** |  | 2007-03-06 → 2007-03-05 (-1d) |  |  | 42d → 50d |  |  |
| 70 | HP Developer Articles |  | 2007-03-06 → 2007-03-05 (-1d) |  |  | 42d → 50d |  |  |
