# release-plan

How a schedule from MS Project changed from version to version. A marks actual dates.

## Version 1 (data date 2007-03-13, saved 2007-03-02)

Note of the change: more db component work, and the release plan

| ID | WBS | Task | Duration | Start | Finish | Predecessors | Total float | Constraint |
| --- | --- | --- | --- | --- | --- | --- | --- | --- |
| 2 | 1 | **Planning** | 0.33d | 2007-03-02 | 2007-03-02 |  | 43.67d |  |
| 3 |  | Initial Release Plan | 2h | 2007-03-02 | 2007-03-02 |  | 43.67d | start no earlier than 2007-03-02 |
| 4 | 2 | **Core** | 2d | 2007-03-02 | 2007-03-06 |  | 42d |  |
| 5 | 2.1 | **Workflow** | 2d | 2007-03-02 | 2007-03-06 |  | 42d |  |
| 6 |  | While component | 1d | 2007-03-02 | 2007-03-05 |  | 43d | start no earlier than 2007-03-02 |
| 7 |  | SFOS-79 More workflow tests | 2d | 2007-03-02 | 2007-03-06 |  | 42d | start no earlier than 2007-03-02 |
| 8 |  | Workflow documentation | 1d | 2007-03-02 | 2007-03-05 |  | 43d | start no earlier than 2007-03-02 |
| 9 | 3 | **Components** | 3d? | 2007-03-02 | 2007-03-07 |  | 41d |  |
| 10 | 3.1 | **XML** | 2d | 2007-03-02 | 2007-03-06 |  | 42d |  |
| 11 |  | XML documentation | 2d | 2007-03-02 | 2007-03-06 |  | 42d | start no earlier than 2007-03-02 |
| 12 |  | XML Complete | 0d | 2007-03-02 | 2007-03-02 |  | 44d |  |
| 13 | 3.2 | **JMX** | 1d? | 2007-03-02 | 2007-03-05 |  | 43d |  |
| 14 |  | Documentation | 1d? | 2007-03-02 | 2007-03-05 |  | 43d | start no earlier than 2007-03-02 |
| 15 | 3.3 | **Database Component** | 3d? | 2007-03-02 | 2007-03-07 |  | 41d |  |
| 16 |  | SFOS-80: CounterAction component | 1d? | 2007-03-02 | 2007-03-05 |  | 41d | start no earlier than 2007-03-02 |
| 17 |  | SFOS-81 SQL Select component | 1d? | 2007-03-05 | 2007-03-06 | 16 | 41d | start no earlier than 2007-03-02 |
| 18 |  | SFOS-77 Document Database | 1d? | 2007-03-06 | 2007-03-07 | 17, 16 | 41d | start no earlier than 2007-03-02 |
| 19 |  | SFOS-82 Add tests for TerminationTransaction | 1d? | 2007-03-02 | 2007-03-05 |  | 43d | start no earlier than 2007-03-02 |
| 20 |  | Database Complete | 0d | 2007-03-07 | 2007-03-07 | 16, 17, 18, 19 | 41d | start no earlier than 2007-03-02 |
| 21 | 4 | **Releases** | 22.5d | 2007-03-15 | 2007-04-20 | 54 | 14d |  |
| 22 |  | 3.11.alpha | 0d | 2007-03-15 | 2007-03-15 |  | 36.5d | start no earlier than 2007-03-15 |
| 23 |  | 3.11.beta | 0d | 2007-03-30 | 2007-03-30 |  | 26.5d | finish no earlier than 2007-03-30 |
| 24 |  | 3.11.gold | 0d | 2007-04-20 | 2007-04-20 |  | 14d | finish no earlier than 2007-04-20 |
| 25 | 5 | **NetBeans Plugin** | 3d? | 2007-03-02 | 2007-03-07 |  | 41d |  |
| 26 |  | Obtain Source | 1d? | 2007-03-02 | 2007-03-05 |  | 41d | start no earlier than 2007-03-02 |
| 27 |  | Add to build process | 1d? | 2007-03-05 | 2007-03-06 | 26 | 41d | start no earlier than 2007-03-02 |
| 28 |  | Build and package | 1d? | 2007-03-06 | 2007-03-07 | 27 | 41d | start no earlier than 2007-03-02 |
| 29 |  | Documentation | 1d? | 2007-03-05 | 2007-03-06 | 26 | 42d | start no earlier than 2007-03-02 |
| 30 |  | Netbeans Plugin ready | 0d | 2007-03-07 | 2007-03-07 | 28, 29 | 41d | start no earlier than 2007-03-02 |
| 31 | 6 | **Documentation** | 1d? | 2007-03-02 | 2007-03-05 |  | 43d |  |
| 32 |  | Review sfReference | 1d? | 2007-03-02 | 2007-03-05 |  | 43d | start no earlier than 2007-03-02 |
| 33 |  | Review quick reference | 1d? | 2007-03-02 | 2007-03-05 |  | 43d | start no earlier than 2007-03-02 |
| 34 |  | Review tutorial | 1d? | 2007-03-02 | 2007-03-05 |  | 43d | start no earlier than 2007-03-02 |
| 35 |  | Review logging docs | 1d? | 2007-03-02 | 2007-03-05 |  | 43d | start no earlier than 2007-03-02 |
| 36 |  | Review IDE development | 1d? | 2007-03-02 | 2007-03-05 |  | 43d | start no earlier than 2007-03-02 |
| 37 |  | Review autoloader | 1d? | 2007-03-02 | 2007-03-05 |  | 43d | start no earlier than 2007-03-02 |
| 38 |  | Review dynamic web server example | 1d? | 2007-03-02 | 2007-03-05 |  | 43d | start no earlier than 2007-03-02 |
| 39 |  | Release Manager installs Forrest | 2h | 2007-03-02 | 2007-03-02 |  | 43.67d | start no earlier than 2007-03-02 |
| 41 | 7 | **Build/Release Process** | 1d? | 2007-03-02 | 2007-03-05 |  | 43d |  |
| 42 |  | Luntbuild to build core | 1d? | 2007-03-02 | 2007-03-05 |  | 43d | start no earlier than 2007-03-02 |
| 43 |  | Luntbuild to build components | 1d? | 2007-03-02 | 2007-03-05 |  | 43d | start no earlier than 2007-03-02 |
| 44 |  | Boomerang? | 1d? | 2007-03-02 | 2007-03-05 |  | 43d | start no earlier than 2007-03-02 |
| 46 |  | Defects | 1d? | 2007-03-02 | 2007-03-05 |  | 43d | start no earlier than 2007-03-02 |
| 49 | 8 | **Public Events** | 44d | 2007-03-02 | 2007-05-15 |  | 0d |  |
| 50 |  | ApacheCon slides+demo | 3d | 2007-03-02 | 2007-03-07 |  | 32.83d |  |
| 51 |  | ApacheCon | 3d | 2007-05-02 | 2007-05-07 | 50 | 0d | must start on 2007-05-02 |
| 52 |  | GGF20 | 4d | 2007-05-09 | 2007-05-15 |  | 0d | must start on 2007-05-09 |
| 53 | 9 | **Articles and Press** | 2d | 2007-03-02 | 2007-03-06 |  | 42d |  |
| 54 |  | Release press note | 3h | 2007-03-02 | 2007-03-02 |  | 43.5d |  |
| 55 |  | TSS Article | 2d | 2007-03-02 | 2007-03-06 |  | 42d |  |
| 56 |  | HP Developer Articles | 2d | 2007-03-02 | 2007-03-06 |  | 42d |  |

## Version 2 (data date 2007-03-13, saved 2007-03-05)

Last finish stays 2007-05-15.

Added:

| ID | Task | Duration | Start | Finish | Constraint |
| --- | --- | --- | --- | --- | --- |
| 9 | SFOS-83 attributes to control termination behaviour of Parallel | 3h? | 2007-03-05 | 2007-03-05 | start no earlier than 2007-03-05 |
| 49 | **External Components** | 1d? | 2007-03-05 | 2007-03-06 |  |
| 50 | CERN RPMs | 1d? | 2007-03-05 | 2007-03-06 | start no earlier than 2007-03-05 |
| 51 | CERN Xen components | 1d? | 2007-03-05 | 2007-03-06 | start no earlier than 2007-03-05 |

Changed:

| ID | Task | Finish | Duration | Total float | Other |
| --- | --- | --- | --- | --- | --- |
| 4 | **Core** |  | 2d → 2d? |  |  |
| 5 | **Workflow** |  | 2d → 2d? |  |  |
| 17 | SFOS-80: CounterTransaction component |  |  |  | was named SFOS-80: CounterAction component |
| 42 | **Build/Release Process** | 2007-03-05 → 2007-03-06 (+1d) | 1d? → 1.83d? | 43d → 42.17d |  |
